# Dự án xây dựng HTTT bán hàng gà rán Jollibee

Schedule from MS Project, 2024-02-02 to 2024-04-19, status date 2024-04-19, costs in ₫, A marks actual dates.
UFM

## Calendars

- Standard: Mon-Fri 08:00-12:00, 13:00-17:00; Sat-Sun off. Exceptions (off unless hours are given): 2024-02-07 to 2024-02-14 (Nghỉ tết Âm Lịch), 2024-02-23 08:00-12:00 (Nghỉ Ăn tiệc đầu năm), 2024-04-18 (Nghỉ ăn mừng kết thúc dự án).

## Resources

| Resource | Group | Unit | Rate |
| --- | --- | --- | --- |
| Trịnh Thái Thương | Quản lý |  | 112500 |
| Lê Phương Minh | Quản lý |  | 93750 |
| Nguyễn Ngọc Khánh Vy | Khảo sát |  | 53125 |
| Mai Thanh Lộc | Khảo sát |  | 31250 |
| Võ Đức Duy | Lập trình |  | 106250 |
| Hoàng Ánh Anh Thư | Lập trình |  | 75000 |
| Nguyễn Quốc Trung | Thiết kế |  | 100000 |
| Nguyễn Tuệ Nghi | Thiết kế |  | 75000 |
| Lê Ngọc Thành Công | Kiểm thử |  | 87500 |
| Giấy in |  | gram | 20000 |
| Máy in |  |  | 5000 |
| Lê Quốc Huy | Kiểm thử |  | 62500 |
| Chi phí pháp sinh |  |  |  |

## Schedule

| ID | WBS | Task | Type | Duration | Start | Finish | Predecessors | Complete | Baseline start | Baseline finish | Baseline duration | Resources | Work | Actual work | Cost | Baseline cost | Actual cost |
| --- | --- | --- | --- | --- | --- | --- | --- | --- | --- | --- | --- | --- | --- | --- | --- | --- | --- |
| 1 | 1 | **Lập kế hoạch** |  | 7d | 2024-02-02 A | 2024-02-20 A |  | 100% | 2024-02-02 | 2024-02-19 | 6d |  | 72h | 72h | 7,370,000 | 7,370,000 | 7,370,000 |
| 2 | 1.1 | Xác định mục tiêu, phạm vi và ngân sách dự án |  | 1d | 2024-02-02 A | 2024-02-02 A |  | 100% | 2024-02-02 | 2024-02-02 | 1d | Lê Phương Minh; Trịnh Thái Thương | 16h | 16h | 1,650,000 | 1,650,000 | 1,650,000 |
| 3 | 1.2 | Phân bố thời gian |  | 1d | 2024-02-05 A | 2024-02-05 A | 2 | 100% | 2024-02-05 | 2024-02-05 | 1d | Lê Phương Minh | 8h | 8h | 750,000 | 750,000 | 750,000 |
| 4 | 1.3 | Phân bố nhân sự |  | 1d | 2024-02-06 A | 2024-02-06 A | 3 | 100% | 2024-02-06 | 2024-02-06 | 1d | Lê Phương Minh | 8h | 8h | 750,000 | 750,000 | 750,000 |
| 5 | 1.4 | Quản trị rủi ro |  | 3d | 2024-02-15 A | 2024-02-19 A | 4 | 100% | 2024-02-15 | 2024-02-16 | 2d | Lê Phương Minh; Trịnh Thái Thương | 32h | 32h | 3,300,000 | 3,300,000 | 3,300,000 |
| 6 | 1.5 | Viết báo cáo lập kết hoạch |  | 1d | 2024-02-20 A | 2024-02-20 A | 5 | 100% | 2024-02-19 | 2024-02-19 | 1d | Giấy in [1 gram]; Trịnh Thái Thương | 8h | 8h | 920,000 | 920,000 | 920,000 |
| 7 | 1.6 | Kết thúc lập kế hoạch |  | 1d | 2024-02-19 A | 2024-02-19 A | 6 | 100% | 2024-02-19 | 2024-02-19 |  |  |  |  |  |  |  |
| 8 | 2 | **Khảo sát hiện trạng và nhu cầu** |  | 4.5d | 2024-02-21 A | 2024-02-27 A |  | 100% | 2024-02-20 | 2024-02-27 | 6d |  | 56h | 56h | 3,470,000 | 2,395,000 | 3,470,000 |
| 9 | 2.1 | **Khảo sát hiện trạng về hệ thống thông tin bán hàng cửa hàng Jollibbee** |  | 3d | 2024-02-21 A | 2024-02-26 A |  | 100% | 2024-02-20 | 2024-02-26 | 4.5d |  | 44h | 44h | 2,987,500 | 1,912,500 | 2,987,500 |
| 10 | 2.1.1 | Khảo sát hiện trạng về phần cứng |  | 0.5d | 2024-02-21 A | 2024-02-21 A | 6 | 100% | 2024-02-20 | 2024-02-20 | 1d | Mai Thanh Lộc; Lê Phương Minh | 8h | 8h | 500,000 | 250,000 | 500,000 |
| 11 | 2.1.2 | Khảo sát hiện trạng về cơ sở dữ liệu |  | 1.5d | 2024-02-21 A | 2024-02-22 A | 10SS | 100% | 2024-02-20 | 2024-02-21 | 2d | Nguyễn Ngọc Khánh Vy; Lê Phương Minh | 16h | 16h | 1,175,000 | 850,000 | 1,175,000 |
| 12 | 2.1.3 | Khảo sát hiện trạng về quy trình nghiệp vụ |  | 1d | 2024-02-22 A | 2024-02-23 A | 11 | 100% | 2024-02-22 | 2024-02-23 | 2d | Mai Thanh Lộc; Lê Phương Minh | 16h | 16h | 1,000,000 | 500,000 | 1,000,000 |
| 13 | 2.1.4 | Viết báo cáo kết quả khảo sát hiện trạng |  | 4h | 2024-02-26 A | 2024-02-26 A | 12 | 100% | 2024-02-26 | 2024-02-26 | 4h | Nguyễn Ngọc Khánh Vy; Giấy in [5 gram] | 4h | 4h | 312,500 | 312,500 | 312,500 |
| 14 | 2.2 | **Khảo sát nhu cầu** |  | 1.5d | 2024-02-26 A | 2024-02-27 A |  | 100% | 2024-02-26 | 2024-02-27 | 1.5d |  | 12h | 12h | 482,500 | 482,500 | 482,500 |
| 15 | 2.2.1 | Khảo sát nhu cầu quản lý các doanh nghiệp |  | 1d | 2024-02-26 A | 2024-02-27 A | 13 | 100% | 2024-02-26 | 2024-02-27 | 1d | Mai Thanh Lộc | 8h | 8h | 250,000 | 250,000 | 250,000 |
| 16 | 2.2.2 | Viết báo cáo kết quả khảo sát nhu cầu |  | 4h | 2024-02-27 A | 2024-02-27 A | 15 | 100% | 2024-02-27 | 2024-02-27 | 4h | Nguyễn Ngọc Khánh Vy; Giấy in [1 gram] | 4h | 4h | 232,500 | 232,500 | 232,500 |
| 17 | 2.2.3 | Kết thúc khảo sát | milestone | 0d | 2024-02-27 A | 2024-02-27 A | 16 | 100% | 2024-02-27 | 2024-02-27 |  |  |  |  |  |  |  |
| 18 | 3 | **Phân tích và thiết kế** |  | 11d | 2024-02-28 A | 2024-03-13 A |  | 100% | 2024-02-28 | 2024-03-12 | 10d |  | 120h | 120h | 10,800,000 | 10,800,000 | 10,800,000 |
| 19 | 3.1 | **Phân tích** |  | 3d | 2024-02-28 A | 2024-03-01 A |  | 100% | 2024-02-28 | 2024-02-29 | 2d |  | 32h | 32h | 2,800,000 | 2,800,000 | 2,800,000 |
| 20 | 3.1.1 | Phân tích dữ liệu |  | 2d | 2024-02-28 A | 2024-03-01 A | 16 | 100% | 2024-02-28 | 2024-02-29 | 2d | Nguyễn Quốc Trung | 16h | 16h | 1,600,000 | 1,600,000 | 1,600,000 |
| 21 | 3.1.2 | Phân tích chức năng |  | 2d | 2024-02-28 A | 2024-02-29 A | 20SS | 100% | 2024-02-28 | 2024-02-29 | 2d | Nguyễn Tuệ Nghi | 16h | 16h | 1,200,000 | 1,200,000 | 1,200,000 |
| 22 | 3.2 | **Thiết kế** |  | 9d | 2024-03-01 A | 2024-03-13 A |  | 100% | 2024-03-01 | 2024-03-12 | 8d |  | 88h | 88h | 8,000,000 | 8,000,000 | 8,000,000 |
| 23 | 3.2.1 | Thiết kế cơ sở dữ liệu |  | 3d | 2024-03-01 A | 2024-03-05 A | 21 | 100% | 2024-03-01 | 2024-03-04 | 2d | Nguyễn Tuệ Nghi; Nguyễn Quốc Trung | 32h | 32h | 2,800,000 | 2,800,000 | 2,800,000 |
| 24 | 3.2.2 | Mô phỏng thiết kế giao diện |  | 2d | 2024-03-06 A | 2024-03-07 A | 23 | 100% | 2024-03-05 | 2024-03-06 | 2d | Nguyễn Tuệ Nghi | 16h | 16h | 1,200,000 | 1,200,000 | 1,200,000 |
| 25 | 3.2.3 | Thiết kế thành phần chức năng |  | 5d | 2024-03-07 A | 2024-03-13 A | 24FS-5% | 100% | 2024-03-06 | 2024-03-12 | 5d | Nguyễn Quốc Trung | 40h | 40h | 4,000,000 | 4,000,000 | 4,000,000 |
| 26 | 3.2.4 | Kết thúc phân tích và thiết kế | milestone | 0d | 2024-03-13 A | 2024-03-13 A | 25 | 100% | 2024-03-12 | 2024-03-12 |  |  |  |  |  |  |  |

| ID | WBS | Task | Type | Duration | Start | Finish | Predecessors | Complete | Remaining | Baseline start | Baseline finish | Baseline duration | Total slack | Constraint | Resources | Work | Actual work | Cost | Baseline cost | Actual cost |
| --- | --- | --- | --- | --- | --- | --- | --- | --- | --- | --- | --- | --- | --- | --- | --- | --- | --- | --- | --- | --- |
| 27 | 4 | **Lập trình** |  | 20d | 2024-03-14 A | 2024-04-10 A |  | 100% |  | 2024-03-13 | 2024-04-05 | 18d |  |  |  | 156h | 156h | 12,950,000 | 15,700,000 | 12,950,000 |
| 28 | 4.1 | Lập trình giao diện |  | 8d | 2024-03-14 A | 2024-03-25 A | 25 | 100% |  | 2024-03-13 | 2024-03-26 | 10d |  |  | Võ Đức Duy; Hoàng Ánh Anh Thư [50%] | 60h | 60h | 5,750,000 | 8,500,000 | 5,750,000 |
| 29 | 4.2 | Lập trình chức năng |  | 12d | 2024-03-26 A | 2024-04-10 A | 28FS-4d | 100% |  | 2024-03-21 | 2024-04-05 | 12d |  |  | Hoàng Ánh Anh Thư | 96h | 96h | 7,200,000 | 7,200,000 | 7,200,000 |
| 30 | 4.3 | Kết thúc lập trình | milestone | 0d | 2024-04-10 A | 2024-04-10 A | 29 | 100% |  | 2024-04-05 | 2024-04-05 |  |  |  |  |  |  |  |  |  |
| 31 | 5 | **Kiểm thử** |  | 5.78d | 2024-04-10 A | 2024-04-17 A |  | 100% |  | 2024-04-08 | 2024-04-17 | 7.7d |  |  |  | 101.6h | 101.6h | 8,385,000 | 7,840,000 | 8,385,000 |
| 32 | 5.1 | Kiểm thử thành phần chức năng |  | 1d | 2024-04-10 A | 2024-04-10 A | 29 | 100% |  | 2024-04-08 | 2024-04-09 | 2d |  |  | Lê Ngọc Thành Công; Võ Đức Duy [70%] | 13.6h | 13.6h | 1,295,000 | 1,400,000 | 1,295,000 |
| 33 | 5.2 | Kiểm thử liên kết giữa các chức năng |  | 1d | 2024-04-10 A | 2024-04-11 A | 32FS-7.5% | 100% |  | 2024-04-08 | 2024-04-10 | 2d |  |  | Lê Quốc Huy; Lê Phương Minh | 16h | 16h | 1,250,000 | 1,000,000 | 1,250,000 |
| 34 | 5.3 | Kiểm thử thử quá trình vận hành của hệ thống |  | 1.33d | 2024-04-11 A | 2024-04-12 A | 33 | 100% |  | 2024-04-10 | 2024-04-12 | 2d |  |  | Lê Ngọc Thành Công; Lê Quốc Huy; Trịnh Thái Thương | 32h | 32h | 2,800,000 | 2,400,000 | 2,800,000 |
| 35 | 5.4 | Báo cáo kiểm thử |  | 1d | 2024-04-12 A | 2024-04-15 A | 34 | 100% |  | 2024-04-12 | 2024-04-15 | 1d |  |  | Lê Ngọc Thành Công | 8h | 8h | 700,000 | 700,000 | 700,000 |
| 36 | 5.5 | Chỉnh sửa dựa trên báo cáo |  | 1d | 2024-04-12 A | 2024-04-15 A | 35FS-8% | 100% |  | 2024-04-12 | 2024-04-15 | 1d |  |  | Lê Quốc Huy | 8h | 8h | 500,000 | 500,000 | 500,000 |
| 37 | 5.6 | Kiểm thử hồi quy |  | 2d | 2024-04-15 A | 2024-04-17 A | 36 | 100% |  | 2024-04-15 | 2024-04-17 | 2d |  |  | Lê Quốc Huy | 16h | 16h | 1,000,000 | 1,000,000 | 1,000,000 |
| 38 | 5.7 | Lập báo cáo kiểm thử |  | 1d | 2024-04-16 A | 2024-04-17 A | 37SS+1d | 100% |  | 2024-04-16 | 2024-04-17 | 1d |  |  | Lê Ngọc Thành Công; Giấy in [7 gram] | 8h | 8h | 840,000 | 840,000 | 840,000 |
| 39 | 5.8 | Kết thúc kiểm thử | milestone | 0d | 2024-04-17 A | 2024-04-17 A | 38 | 100% |  | 2024-04-17 | 2024-04-17 |  |  |  |  |  |  |  |  |  |
| 40 | 6 | **Bàn giao** |  | 1d | 2024-04-19 A | 2024-04-19 A |  | 100% |  | 2024-04-17 | 2024-04-18 | 1d |  |  |  | 8h | 8h | 1,100,000 | 1,100,000 | 1,100,000 |
| 41 | 6.1 | Bàn giao hệ thống |  | 4h | 2024-04-19 A | 2024-04-19 A | 38 | 100% |  | 2024-04-17 | 2024-04-18 | 4h |  |  | Trịnh Thái Thương | 4h | 4h | 450,000 | 450,000 | 450,000 |
| 42 | 6.2 | Bàn giao tài liệu và video hướng dẫn |  | 4h | 2024-04-19 A | 2024-04-19 A | 41 | 100% |  | 2024-04-18 | 2024-04-18 | 4h |  |  | Trịnh Thái Thương; Giấy in [10 gram] | 4h | 4h | 650,000 | 650,000 | 650,000 |
| 43 | 6.3 | Kết thúc bàn giao | milestone | 0d | 2024-04-19 A | 2024-04-19 A | 42 | 100% |  | 2024-04-18 | 2024-04-18 |  |  |  |  |  |  |  |  |  |
| 44 | 7 | **Họp giao ban** |  | 39.75d | 2024-02-16 A | 2024-04-12 |  | 99% | 0d | 2024-02-16 | 2024-04-12 | 40.25d | 4.75d |  |  | 10h | 10h | 7,580,000 |  | 580,000 |
| 45 | 7.1 | Họp giao ban 1 |  | 2h | 2024-02-16 A | 2024-02-16 A |  | 100% |  | 2024-02-16 | 2024-02-16 | 2h |  | start no earlier than 2024-02-16 | Giấy in [6 gram]; Máy in | 2h | 2h | 130,000 |  | 130,000 |
| 46 | 7.2 | Họp giao ban 2 |  | 2h | 2024-03-01 A | 2024-03-01 A |  | 100% |  | 2024-03-01 | 2024-03-01 | 2h |  | start no earlier than 2024-03-01 | Giấy in [5 gram]; Máy in | 2h | 2h | 110,000 |  | 110,000 |
| 47 | 7.3 | Họp giao ban 3 |  | 2h | 2024-03-15 A | 2024-03-15 A |  | 100% |  | 2024-03-15 | 2024-03-15 | 2h |  | start no earlier than 2024-03-15 | Giấy in [5 gram]; Máy in | 2h | 2h | 110,000 |  | 110,000 |
| 48 | 7.4 | Họp giao ban 4 |  | 2h | 2024-03-29 A | 2024-03-29 A |  | 100% |  | 2024-03-29 | 2024-03-29 | 2h |  | start no earlier than 2024-03-29 | Giấy in [4.5 gram]; Máy in | 2h | 2h | 100,000 |  | 100,000 |
| 49 | 7.5 | Họp giao ban 5 |  | 2h | 2024-04-12 A | 2024-04-12 |  | 99% | 0h | 2024-04-12 | 2024-04-12 | 2h | 4.75d | start no earlier than 2024-04-12 | Chi phí pháp sinh [0.1%]; Giấy in [6 gram]; Máy in | 2h | 2h | 7,130,000 |  | 130,000 |

Notes:
- 44: Ghi chú cho nội dung họp giao ban như sau: / o Báo cáo tiến độ và kết quả đạt được so với tiến độ chung của dự án / o Thảo luận và giải quyết các vấn đề phát sinh nếu có / o Các ư kiến khác
